# Proyecto,N,T

Schedule from MS Project, 2019-02-04 to 2020-07-03, 6 hours a day, costs in $, A marks actual dates.

## Calendars

- Estándar: Mon-Fri 06:00-10:00, 10:01-12:00; Sat-Sun off.

## Resources

| Resource | Rate | Cost per use |
| --- | --- | --- |
| brandon garzon | 7500 | 1250000 |
| daniel martinez | 7500 | 1250000 |
| cristian barrios | 7500 | 1250000 |
| jhon gonzalez | 7500 | 1250000 |
| usb | 100 |  |
| internet | 410 | 90000 |
| electricidad | 435 | 130000 |
| computador 1 | 500 | 120000 |
| computador2 | 500 | 120000 |
| computador 3 | 500 | 120000 |
| computador4 | 500 | 120000 |
| sofware | 720 |  |

## Schedule

| ID | WBS | Task | Duration | Start | Finish | Predecessors | Complete | Remaining | Total slack | Free slack | Constraint | Resources | Work | Actual work | Cost | Actual cost |
| --- | --- | --- | --- | --- | --- | --- | --- | --- | --- | --- | --- | --- | --- | --- | --- | --- |
| 1 | 1 | **Proyecto** | 368.47d? | 2019-02-04 A | 2020-07-03 |  | 27% | 268.62d? | 0d |  |  |  | 5214.27h | 1292.37h | 69,985,490 | 15,859,080 |
| 2 | 1.1 | **Analisis** | 54.35d | 2019-02-04 A | 2019-04-19 A |  | 100% |  |  |  |  | brandon garzon; computador 1; computador2; electricidad; internet; jhon gonzalez; sofware; usb | 652.17h | 652.17h | 7,853,915 | 7,853,915 |
| 3 | 1.1.1 | presentacion del proyecto | 4.49d | 2019-02-04 A | 2019-02-08 A |  | 100% |  |  |  | finish no earlier than 2019-02-08 |  |  |  |  |  |
| 4 | 1.1.2 | Levantamiento de Información | 10.83d | 2019-02-11 A | 2019-02-26 A | 3 | 100% |  |  |  | start no earlier than 2019-02-11 |  |  |  |  |  |
| 5 | 1.1.3 | Diagrama BPMN | 9.47d | 2019-02-25 A | 2019-03-08 A | 4 | 100% |  |  |  | start no earlier than 2019-02-25 |  |  |  |  |  |
| 6 | 1.1.4 | Historias de usuario | 4.49d | 2019-03-11 A | 2019-03-15 A | 5 | 100% |  |  |  | finish no earlier than 2019-03-15 |  |  |  |  |  |
| 7 | 1.1.5 | Diagrama de casos de uso | 9.47d | 2019-03-18 A | 2019-03-29 A | 6 | 100% |  |  |  | finish no earlier than 2019-03-29 |  |  |  |  |  |
| 8 | 1.1.6 | Diagrama casos de uso extendidos | 9.47d | 2019-04-01 A | 2019-04-12 A | 7 | 100% |  |  |  | start no earlier than 2019-04-01 |  |  |  |  |  |
| 9 | 1.1.7 | Elavoracion de control de verciones | 4.49d | 2019-04-15 A | 2019-04-19 A | 8 | 100% |  |  |  | finish no earlier than 2019-04-19 |  |  |  |  |  |
| 10 | 1.2 | **Diseño** | 53.35d | 2019-04-23 A | 2019-07-05 A | 2 | 100% |  |  |  |  | computador 1; computador 3; computador2; computador4; cristian barrios; daniel martinez; electricidad; internet; sofware; usb | 640.2h | 640.2h | 8,005,165 | 8,005,165 |
| 11 | 1.2.1 | Modelo entidad relación | 3.49d | 2019-04-23 A | 2019-04-26 A |  | 100% |  |  |  | finish no earlier than 2019-04-26 |  |  |  |  |  |
| 12 | 1.2.2 | Diccionario de datos | 4.49d | 2019-04-29 A | 2019-05-03 A | 11 | 100% |  |  |  | finish no earlier than 2019-05-03 |  |  |  |  |  |
| 13 | 1.2.3 | Cronograma de presupuesto | 2.67d | 2019-05-06 A | 2019-05-09 A | 12 | 100% |  |  |  | start no earlier than 2019-05-06 |  |  |  |  |  |
| 14 | 1.2.4 | Diagrama de distribucion | 9.47d | 2019-05-13 A | 2019-05-24 A | 13 | 100% |  |  |  | start no earlier than 2019-05-13 |  |  |  |  |  |
| 15 | 1.2.5 | Diagrama de clases | 9.47d | 2019-05-27 A | 2019-06-07 A | 14 | 100% |  |  |  | start no earlier than 2019-05-27 |  |  |  |  |  |
| 16 | 1.2.6 | Formato de casos | 4.49d | 2019-06-10 A | 2019-06-14 A | 15 | 100% |  |  |  | finish no earlier than 2019-06-14 |  |  |  |  |  |
| 17 | 1.2.7 | Prototipo de interfas"mockups" | 9.47d | 2019-06-17 A | 2019-06-28 A | 16 | 100% |  |  |  | finish no earlier than 2019-06-28 |  |  |  |  |  |
| 18 | 1.2.8 | Normalizacion de el diagrama entidad relación | 4.49d | 2019-07-01 A | 2019-07-05 A | 17 | 100% |  |  |  | finish no earlier than 2019-07-05 |  |  |  |  |  |
| 19 | 1.3 | Periodo no laborable | 9.97d? | 2019-07-08 | 2019-07-19 | 10 |  |  | 14.97d | 0.5d | start no earlier than 2019-07-08 | brandon garzon; cristian barrios; daniel martinez; jhon gonzalez | 239.33h |  | 6,795,000 |  |
| 20 | 1.4 | **Desarrollo** | 54.35d | 2019-07-22 | 2019-10-04 | 19 |  |  | 12.27d | 0.5d |  | brandon garzon; computador 1; computador 3; computador2; computador4; cristian barrios; daniel martinez; electricidad; internet; jhon gonzalez; sofware; usb | 1304.33h |  | 15,486,165 |  |
| 21 | 1.4.1 | Inventario del sistema de información | 14.46d | 2019-07-22 | 2019-08-09 |  |  |  | 14.47d | 0.5d | finish no earlier than 2019-08-09 |  |  |  |  |  |
| 22 | 1.4.2 | Sistema de integracion continua | 14.46d | 2019-08-12 | 2019-08-30 | 21 |  |  | 13.97d | 0.5d | start no earlier than 2019-08-12 |  |  |  |  |  |
| 23 | 1.4.3 | Construccion de bases de datos | 9.47d | 2019-09-02 | 2019-09-13 | 22 |  |  | 13.47d | 0.5d | start no earlier than 2019-09-02 |  |  |  |  |  |
| 24 | 1.4.4 | Implementacion de sentencia dml | 9.47d | 2019-09-16 | 2019-09-27 | 23 |  |  | 12.97d | 0.2d | start no earlier than 2019-09-16 |  |  |  |  |  |
| 25 | 1.4.5 | Prototipo funcional usando css | 0.8d | 2019-09-30 | 2019-09-30 | 24 |  |  | 12.77d | 0.5d | finish no earlier than 2019-09-30 |  |  |  |  |  |
| 26 | 1.4.6 | Iinformes de costos | 3.49d | 2019-10-01 | 2019-10-04 | 25 |  |  | 12.27d |  | finish no earlier than 2019-10-04 |  |  |  |  |  |

| ID | WBS | Task | Duration | Start | Finish | Predecessors | Total slack | Free slack | Constraint | Resources | Work | Cost |
| --- | --- | --- | --- | --- | --- | --- | --- | --- | --- | --- | --- | --- |
| 27 | 1.5 | **Implementacion** | 52.35d | 2019-10-07 | 2019-12-18 | 20 | 7.35d | 0d |  | computador 1; computador 3; computador2; computador4; cristian barrios; daniel martinez; electricidad; internet; sofware; usb | 628.23h | 7,915,415 |
| 28 | 1.5.1 | Manual tecnico | 7.48d | 2019-10-07 | 2019-10-16 |  | 11.77d | 0.5d | finish no earlier than 2019-10-16 |  |  |  |
| 29 | 1.5.2 | Evidencias de tecnicas de acople | 4.49d | 2019-10-17 | 2019-10-23 | 28 | 11.27d | 0d | finish no earlier than 2019-10-23 |  |  |  |
| 30 | 1.5.3 | instalacion del aplicativo | 12d | 2019-10-24 | 2019-11-11 | 29 | 11.27d | 0d |  |  |  |  |
| 31 | 1.5.4 | Implementacion de diagrama de distribucion | 12d | 2019-11-11 | 2019-11-27 | 30 | 11.27d | 3.42d |  |  |  |  |
| 32 | 1.5.5 | Informe de migracion de datos | 4.49d | 2019-12-02 | 2019-12-06 | 31 | 7.85d | 0.5d | finish no earlier than 2019-12-06 |  |  |  |
| 33 | 1.5.6 | evidencias de instalacon plan de respaldo y migracion | 7.48d | 2019-12-09 | 2019-12-18 | 32 | 7.35d |  | finish no earlier than 2019-12-18 |  |  |  |
| 34 | 1.6 | Periodo no laborable | 32.91d? | 2019-12-19 | 2020-02-03 | 27 | 7.35d | 0.5d | finish no earlier than 2020-02-03 | brandon garzon; cristian barrios; daniel martinez; jhon gonzalez | 789.8h | 10,923,500 |
| 35 | 1.7 | **Pruebas** | 53.35d | 2020-02-04 | 2020-04-17 | 34 | 6.85d | 0d |  | brandon garzon; computador 1; computador2; electricidad; internet; jhon gonzalez; sofware; usb | 960.2h | 13,006,330 |
| 36 | 1.7.1 | Cuadro comparativo de provedores | 26.67d | 2020-02-04 | 2020-03-12 |  | 6.85d | 0d | start no earlier than 2020-02-04 |  |  |  |
| 37 | 1.7.2 | Contratos de sofware | 26.67d | 2020-03-12 | 2020-04-17 | 36 | 6.85d | 0d | finish no earlier than 2020-04-01 | computador 1; cristian barrios; daniel martinez; electricidad; internet; sofware; usb | 320h | 5,242,165 |
| 38 | 1.7.3 | Documentacion de pruebas | 0.02d | 2020-04-17 | 2020-04-17 | 37 | 6.85d |  | finish no earlier than 2020-04-17 |  |  |  |
| 39 | 1.8 | **Calidad** | 54.85d | 2020-04-20 | 2020-07-03 | 35 | 0d |  |  |  |  |  |
| 40 | 1.8.1 | Evidencia modelo de calidad | 26.67d | 2020-04-20 | 2020-05-27 |  | 27.68d |  | start no earlier than 2020-04-20 |  |  |  |
| 41 | 1.8.2 | Evidencias del proyecto terminado | 22.67d | 2020-04-20 | 2020-05-20 | 29 | 6.85d |  |  |  |  |  |
| 42 | 1.8.3 | Evidencias de manuial de usuario y de operación | 25.33d | 2020-05-29 | 2020-07-03 | 41 | 0d |  | finish no earlier than 2020-07-03 |  |  |  |
